# Task4

How a schedule from MS Project changed from version to version. A marks actual dates.

## Version 1 (saved 2022-03-01)

Note of the change: done lab

| ID | WBS | Task | Duration | Start | Finish | Predecessors | Total float |
| --- | --- | --- | --- | --- | --- | --- | --- |
| 1 |  | Начало проекта | 0w | 2022-03-01 | 2022-03-01 |  | 60d |
| 2 | 2 | **Создание интерфейса** | 110d | 2022-03-01 | 2022-08-10 | 1 | 0d |
| 3 | 2.1 | **Разработка дизайна интерфейса** | 25d | 2022-03-01 | 2022-04-06 |  | 70d |
| 4 |  | Разработка 2D графических элементов | 3w | 2022-03-01 | 2022-03-23 |  | 70d |
| 5 |  | Разработка 3D графических элементов | 2w | 2022-03-01 | 2022-03-16 | 4SS | 70d |
| 6 |  | Создание заставки | 3w | 2022-03-17 | 2022-04-06 | 5 | 70d |
| 7 |  | Программирование интерфейса | 3w | 2022-07-21 | 2022-08-10 | 3, 12 | 0d |
| 8 | 3 | **Построение базы объектов** | 85d | 2022-03-01 | 2022-07-06 |  | 53d |
| 9 |  | Анализ и построение структуры базы объектов | 2w | 2022-03-01 | 2022-03-16 |  | 53d |
| 10 |  | Программирование средств обработки базы объектов | 3w | 2022-03-17 | 2022-04-06 | 9 | 53d |
| 11 |  | Наполнение базы объектов | 12w | 2022-04-07 | 2022-07-06 | 10 | 53d |
| 12 | 4 | **Создание ядра GIS** | 95d | 2022-03-01 | 2022-07-20 |  | 0d |
| 13 |  | Анализ и проектирование ядра | 3w | 2022-03-01 | 2022-03-23 |  | 0d |
| 14 |  | Создание модели ядра | 5w | 2022-03-24 | 2022-04-27 | 13 | 0d |
| 15 |  | Тестирование модели ядра | 1w | 2022-04-28 | 2022-05-06 | 14 | 0d |
| 16 |  | Создание рабочей версии ядра | 10w | 2022-05-11 | 2022-07-20 | 15 | 0d |
| 17 |  | Создание мультемедиа-наполнения | 6w | 2022-04-07 | 2022-05-24 | 3 | 83d |
| 18 |  | Создание справочной системы | 2w | 2022-08-11 | 2022-08-24 | 7 | 18d |
| 19 | 7 | **Создание руководства пользователя** | 17d | 2022-07-28 | 2022-08-19 | 7FS-10d | 0d |
| 20 |  | Разработка дизайна руководства | 1w | 2022-07-28 | 2022-08-03 |  | 0d |
| 21 |  | Написание руководства пользователя | 3w | 2022-08-01 | 2022-08-19 | 20SS+2d | 0d |
| 22 | 8 | **Создание web-сайта и поддержка** | 21d | 2022-08-01 | 2022-08-29 |  | 0d |
| 23 |  | Разработка структуры сайта | 1d | 2022-08-01 | 2022-08-01 | 21SS | 0d |
| 24 |  | Разработка дизайна сайта | 1w | 2022-08-02 | 2022-08-08 | 23 | 0d |
| 25 |  | Наполнение сайта | 3w | 2022-08-09 | 2022-08-29 | 24 | 0d |
| 26 |  | Тестирование сайта | 4w | 2022-08-23 | 2022-09-19 | 22FS-1w | 0d |
| 27 |  | Сдача сайта в эксплуатацию | 0w | 2022-09-19 | 2022-09-19 | 26 | 0d |

## Version 2 (saved 2022-03-02)

Note of the change: done lab1

Last finish stays 2022-09-19.

Changed:

| ID | Task | Finish | Duration | Total float | Other |
| --- | --- | --- | --- | --- | --- |
| 8 | **Построение базы объектов** | 2022-07-06 → 2022-04-22 (-75d) | 85d → 37d | 53d → 101d |  |
| 10 | Программирование средств обработки базы объектов |  |  | 53d → 101d | resources none → Программист#3; Программист#4 |
| 11 | Наполнение базы объектов | 2022-07-06 → 2022-04-22 (-75d) | 12w → 2.4w | 53d → 101d | resources none → Наборщик данных#1; Наборщик данных#2; Наборщик данных#3; Наборщик данных#4; Наборщик данных#5 |
| 13 | Анализ и проектирование ядра |  |  |  | resources none → Ведущий программист; Системный аналитик |
| 14 | Создание модели ядра |  |  |  | resources none → Ведущий программист; Программист#1 |
| 15 | Тестирование модели ядра |  |  |  | resources none → Программист#1 |
| 16 | Создание рабочей версии ядра |  |  |  | resources none → Ведущий программист; Программист#1; Программист#2 |
| 17 | Создание мультемедиа-наполнения |  |  |  | resources none → Мультимедиа-корреспондент |
| 18 | Создание справочной системы |  |  |  | resources none → Технический писатель |
| 20 | Разработка дизайна руководства |  |  |  | resources none → Художник-дизайнер |
| 21 | Написание руководства пользователя |  |  |  | resources none → Технический писатель |
| 23 | Разработка структуры сайта |  |  |  | resources none → Web-дизайнер |
| 24 | Разработка дизайна сайта |  |  |  | resources none → 3D аниматор; Web-дизайнер; Художник-дизайнер |
| 25 | Наполнение сайта |  |  |  | resources none → Web-дизайнер |
| 26 | Тестирование сайта |  |  |  | resources none → Ведущий программист; Программист#1; Программист#2 |
