# Task3

How a schedule from MS Project changed from version to version. A marks actual dates.

## Version 1 (saved 2022-03-14)

Note of the change: fixed data in task2

| ID | WBS | Task | Duration | Start | Finish | Predecessors | Total float |
| --- | --- | --- | --- | --- | --- | --- | --- |
| 1 |  | Начало проекта | 0w | 2022-03-01 | 2022-03-01 |  | 70d |
| 2 | 2 | **Создание интерфейса** | 110d | 2022-03-01 | 2022-08-10 | 1 | 0d |
| 3 | 2.1 | **Разработка дизайна интерфейса** | 25d | 2022-03-01 | 2022-04-06 |  | 70d |
| 4 |  | Разработка 2D графических элементов | 3w | 2022-03-01 | 2022-03-23 |  | 70d |
| 5 |  | Разработка 3D графических элементов | 2w | 2022-03-01 | 2022-03-16 | 4SS | 70d |
| 6 |  | Создание заставки | 3w | 2022-03-17 | 2022-04-06 | 5 | 70d |
| 7 |  | Программирование интерфейса | 3w | 2022-07-21 | 2022-08-10 | 3, 12 | 0d |
| 8 | 3 | **Построение базы объектов** | 85d | 2022-03-24 | 2022-07-27 |  | 40d |
| 9 |  | Анализ и построение структуры базы объектов | 2w | 2022-03-24 | 2022-04-06 |  | 40d |
| 10 |  | Программирование средств обработки базы объектов | 3w | 2022-04-07 | 2022-04-27 | 9 | 40d |
| 11 |  | Наполнение базы объектов | 12w | 2022-04-28 | 2022-07-27 | 10 | 40d |
| 12 | 4 | **Создание ядра GIS** | 95d | 2022-03-01 | 2022-07-20 |  | 0d |
| 13 |  | Анализ и проектирование ядра | 3w | 2022-03-01 | 2022-03-23 |  | 0d |
| 14 |  | Создание модели ядра | 5w | 2022-03-24 | 2022-04-27 | 13 | 0d |
| 15 |  | Тестирование модели ядра | 1w | 2022-04-28 | 2022-05-06 | 14 | 0d |
| 16 |  | Создание рабочей версии ядра | 10w | 2022-05-11 | 2022-07-20 | 15 | 0d |
| 17 |  | Создание мультемедиа-наполнения | 6w | 2022-04-07 | 2022-05-24 | 3 | 85d |
| 18 |  | Создание справочной системы | 2w | 2022-08-22 | 2022-09-02 | 7 | 13d |
| 19 | 7 | **Создание руководства пользователя** | 17d | 2022-07-28 | 2022-08-19 | 7FS-10d | 0d |
| 20 |  | Разработка дизайна руководства | 1w | 2022-07-28 | 2022-08-03 |  | 0d |
| 21 |  | Написание руководства пользователя | 3w | 2022-08-01 | 2022-08-19 | 20SS+2d | 0d |
| 22 | 8 | **Создание web-сайта и поддержка** | 23d | 2022-08-01 | 2022-08-31 |  | 0d |
| 23 |  | Разработка структуры сайта | 1d | 2022-08-01 | 2022-08-01 | 21SS | 0d |
| 24 |  | Разработка дизайна сайта | 1.4w | 2022-08-02 | 2022-08-10 | 23 | 0d |
| 25 |  | Наполнение сайта | 3w | 2022-08-11 | 2022-08-31 | 24 | 0d |
| 26 |  | Тестирование сайта | 4w | 2022-08-25 | 2022-09-21 | 22FS-1w | 0d |
| 27 |  | Сдача сайта в эксплуатацию | 0w | 2022-09-21 | 2022-09-21 | 26 | 0d |

## Version 2 (saved 2022-03-14)

Note of the change: done lab3

Last finish 2022-09-21 → 2022-07-28 (-55d).

Added:

| ID | Task | Duration | Start | Finish | Constraint | Resources |
| --- | --- | --- | --- | --- | --- | --- |
| 28 | **Совещание** | 98.12d | 2022-03-02 09:00 | 2022-07-27 10:00 |  |  |
| 29 | Совещание 1 | 1h | 2022-03-02 09:00 | 2022-03-02 10:00 | start no earlier than 2022-03-02 09:00 | 3D аниматор; Web-дизайнер; Ведущий программист; Мультимедиа-корреспондент; Системный аналитик; Технический писатель; Художник-дизайнер |
| 30 | Совещание 2 | 1h | 2022-03-09 09:00 | 2022-03-09 10:00 | start no earlier than 2022-03-09 09:00 | 3D аниматор; Web-дизайнер; Ведущий программист; Мультимедиа-корреспондент; Системный аналитик; Технический писатель; Художник-дизайнер |
| 31 | Совещание 3 | 1h | 2022-03-16 09:00 | 2022-03-16 10:00 | start no earlier than 2022-03-16 09:00 | 3D аниматор; Web-дизайнер; Ведущий программист; Мультимедиа-корреспондент; Системный аналитик; Технический писатель; Художник-дизайнер |
| 32 | Совещание 4 | 1h | 2022-03-23 09:00 | 2022-03-23 10:00 | start no earlier than 2022-03-23 09:00 | 3D аниматор; Web-дизайнер; Ведущий программист; Мультимедиа-корреспондент; Системный аналитик; Технический писатель; Художник-дизайнер |
| 33 | Совещание 5 | 1h | 2022-03-30 09:00 | 2022-03-30 10:00 | start no earlier than 2022-03-30 09:00 | 3D аниматор; Web-дизайнер; Ведущий программист; Мультимедиа-корреспондент; Системный аналитик; Технический писатель; Художник-дизайнер |
| 34 | Совещание 6 | 1h | 2022-04-06 09:00 | 2022-04-06 10:00 | start no earlier than 2022-04-06 09:00 | 3D аниматор; Web-дизайнер; Ведущий программист; Мультимедиа-корреспондент; Системный аналитик; Технический писатель; Художник-дизайнер |
| 35 | Совещание 7 | 1h | 2022-04-13 09:00 | 2022-04-13 10:00 | start no earlier than 2022-04-13 09:00 | 3D аниматор; Web-дизайнер; Ведущий программист; Мультимедиа-корреспондент; Системный аналитик; Технический писатель; Художник-дизайнер |
| 36 | Совещание 8 | 1h | 2022-04-20 09:00 | 2022-04-20 10:00 | start no earlier than 2022-04-20 09:00 | 3D аниматор; Web-дизайнер; Ведущий программист; Мультимедиа-корреспондент; Системный аналитик; Технический писатель; Художник-дизайнер |
| 37 | Совещание 9 | 1h | 2022-04-27 09:00 | 2022-04-27 10:00 | start no earlier than 2022-04-27 09:00 | 3D аниматор; Web-дизайнер; Ведущий программист; Мультимедиа-корреспондент; Системный аналитик; Технический писатель; Художник-дизайнер |
| 38 | Совещание 10 | 1h | 2022-05-04 09:00 | 2022-05-04 10:00 | start no earlier than 2022-05-04 09:00 | 3D аниматор; Web-дизайнер; Ведущий программист; Мультимедиа-корреспондент; Системный аналитик; Технический писатель; Художник-дизайнер |
| 39 | Совещание 11 | 1h | 2022-05-11 09:00 | 2022-05-11 10:00 | start no earlier than 2022-05-11 09:00 | 3D аниматор; Web-дизайнер; Ведущий программист; Мультимедиа-корреспондент; Системный аналитик; Технический писатель; Художник-дизайнер |
| 40 | Совещание 12 | 1h | 2022-05-18 09:00 | 2022-05-18 10:00 | start no earlier than 2022-05-18 09:00 | 3D аниматор; Web-дизайнер; Ведущий программист; Мультимедиа-корреспондент; Системный аналитик; Технический писатель; Художник-дизайнер |
| 41 | Совещание 13 | 1h | 2022-05-25 09:00 | 2022-05-25 10:00 | start no earlier than 2022-05-25 09:00 | 3D аниматор; Web-дизайнер; Ведущий программист; Мультимедиа-корреспондент; Системный аналитик; Технический писатель; Художник-дизайнер |
| 42 | Совещание 14 | 1h | 2022-06-01 09:00 | 2022-06-01 10:00 | start no earlier than 2022-06-01 09:00 | 3D аниматор; Web-дизайнер; Ведущий программист; Мультимедиа-корреспондент; Системный аналитик; Технический писатель; Художник-дизайнер |
| 43 | Совещание 15 | 1h | 2022-06-08 09:00 | 2022-06-08 10:00 | start no earlier than 2022-06-08 09:00 | 3D аниматор; Web-дизайнер; Ведущий программист; Мультимедиа-корреспондент; Системный аналитик; Технический писатель; Художник-дизайнер |
| 44 | Совещание 16 | 1h | 2022-06-15 09:00 | 2022-06-15 10:00 | start no earlier than 2022-06-15 09:00 | 3D аниматор; Web-дизайнер; Ведущий программист; Мультимедиа-корреспондент; Системный аналитик; Технический писатель; Художник-дизайнер |
| 45 | Совещание 17 | 1h | 2022-06-22 09:00 | 2022-06-22 10:00 | start no earlier than 2022-06-22 09:00 | 3D аниматор; Web-дизайнер; Ведущий программист; Мультимедиа-корреспондент; Системный аналитик; Технический писатель; Художник-дизайнер |
| 46 | Совещание 18 | 1h | 2022-06-29 09:00 | 2022-06-29 10:00 | start no earlier than 2022-06-29 09:00 | 3D аниматор; Web-дизайнер; Ведущий программист; Мультимедиа-корреспондент; Системный аналитик; Технический писатель; Художник-дизайнер |
| 47 | Совещание 19 | 1h | 2022-07-06 09:00 | 2022-07-06 10:00 | start no earlier than 2022-07-06 09:00 | 3D аниматор; Web-дизайнер; Ведущий программист; Мультимедиа-корреспондент; Системный аналитик; Технический писатель; Художник-дизайнер |
| 48 | Совещание 20 | 1h | 2022-07-13 09:00 | 2022-07-13 10:00 | start no earlier than 2022-07-13 09:00 | 3D аниматор; Web-дизайнер; Ведущий программист; Мультимедиа-корреспондент; Системный аналитик; Технический писатель; Художник-дизайнер |
| 49 | Совещание 21 | 1h | 2022-07-20 09:00 | 2022-07-20 10:00 | start no earlier than 2022-07-20 09:00 | 3D аниматор; Web-дизайнер; Ведущий программист; Мультимедиа-корреспондент; Системный аналитик; Технический писатель; Художник-дизайнер |
| 50 | Совещание 22 | 1h | 2022-07-27 09:00 | 2022-07-27 10:00 | start no earlier than 2022-07-27 09:00 | 3D аниматор; Web-дизайнер; Ведущий программист; Мультимедиа-корреспондент; Системный аналитик; Технический писатель; Художник-дизайнер |

Changed:

| ID | Task | Start | Finish | Duration | Total float | Other |
| --- | --- | --- | --- | --- | --- | --- |
| 1 | Начало проекта | 2022-03-01 → 2022-03-01 09:00 | 2022-03-01 → 2022-03-01 09:00 |  | 70d → 44.53d | baseline start none → 2022-03-01 09:00; baseline finish none → 2022-03-01 09:00 |
| 2 | **Создание интерфейса** | 2022-03-01 → 2022-03-01 09:00 | 2022-08-10 → 2022-06-28 15:24 (-43d) | 110d → 78.68d |  | baseline start none → 2022-03-01 09:00; baseline finish none → 2022-06-28 15:24 |
| 3 | **Разработка дизайна интерфейса** | 2022-03-01 → 2022-03-01 09:00 | 2022-04-06 → 2022-04-07 15:00 (+1d) | 25d → 25.62d | 70d → 44.53d | baseline start none → 2022-03-01 09:00; baseline finish none → 2022-04-07 15:00 |
| 4 | Разработка 2D графических элементов | 2022-03-01 → 2022-03-01 09:00 | 2022-03-23 → 2022-03-24 12:00 (+1d) |  | 70d → 44.53d | baseline start none → 2022-03-01 09:00; baseline finish none → 2022-03-24 12:00 |
| 5 | Разработка 3D графических элементов | 2022-03-01 → 2022-03-01 09:00 | 2022-03-16 → 2022-03-17 11:00 (+1d) |  | 70d → 44.53d | baseline start none → 2022-03-01 09:00; baseline finish none → 2022-03-17 11:00 |
| 6 | Создание заставки | 2022-03-17 → 2022-03-17 12:00 | 2022-04-06 → 2022-04-07 15:00 (+1d) |  | 70d → 44.53d | baseline start none → 2022-03-17 12:00; baseline finish none → 2022-04-07 15:00 |
| 7 | Программирование интерфейса | 2022-07-21 → 2022-06-17 10:24 (-34d) | 2022-08-10 → 2022-06-28 15:24 (-43d) | 3w → 1.5w |  | resources Программист#3; Программист#4 → Программист#3; Программист#4; Программист#2; Программист#1; baseline start none → 2022-06-17 10:24; baseline finish none → 2022-06-28 15:24 |
| 8 | **Построение базы объектов** | 2022-03-24 → 2022-03-01 10:00 (-23d) | 2022-07-27 → 2022-07-26 11:47 (-1d) | 85d → 98.22d | 40d → 2.56d | baseline start none → 2022-03-01 10:00; baseline finish none → 2022-07-26 11:47 |
| 9 | Анализ и построение структуры базы объектов | 2022-03-24 → 2022-03-01 10:00 (-23d) | 2022-04-06 → 2022-03-22 11:00 (-15d) |  | 40d → 2.56d | baseline start none → 2022-03-01 10:00; baseline finish none → 2022-03-22 11:00 |
| 10 | Программирование средств обработки базы объектов | 2022-04-07 → 2022-03-22 11:00 (-16d) | 2022-04-27 → 2022-04-26 11:47 (-1d) |  | 40d → 2.56d | baseline start none → 2022-03-22 11:00; baseline finish none → 2022-04-26 11:47 |
| 11 | Наполнение базы объектов | 2022-04-28 → 2022-04-26 11:47 (-2d) | 2022-07-27 → 2022-07-26 11:47 (-1d) |  | 40d → 2.56d | baseline start none → 2022-04-26 11:47; baseline finish none → 2022-07-26 11:47 |
| 12 | **Создание ядра GIS** | 2022-03-01 → 2022-03-01 09:00 | 2022-07-20 → 2022-06-17 10:24 (-33d) | 95d → 71.18d |  | baseline start none → 2022-03-01 09:00; baseline finish none → 2022-06-17 10:24 |
| 13 | Анализ и проектирование ядра | 2022-03-01 → 2022-03-01 09:00 | 2022-03-23 → 2022-04-07 15:00 (+15d) | 3w → 5.03w |  | baseline start none → 2022-03-01 09:00; baseline finish none → 2022-04-07 15:00 |
| 14 | Создание модели ядра | 2022-03-24 → 2022-04-07 15:00 (+14d) | 2022-04-27 → 2022-04-21 15:47 (-6d) | 5w → 2.02w |  | resources Ведущий программист; Программист#1 → Ведущий программист; Программист#1; Программист#2; Программист#3; Программист#4; baseline start none → 2022-04-07 15:00; baseline finish none → 2022-04-21 15:47 |
| 15 | Тестирование модели ядра | 2022-04-28 → 2022-04-21 15:47 (-7d) | 2022-05-06 → 2022-04-28 15:47 (-8d) |  |  | baseline start none → 2022-04-21 15:47; baseline finish none → 2022-04-28 15:47 |
| 16 | Создание рабочей версии ядра | 2022-05-11 → 2022-04-28 15:47 (-13d) | 2022-07-20 → 2022-06-17 10:24 (-33d) | 10w → 6.09w |  | resources Ведущий программист; Программист#1; Программист#2 → Ведущий программист; Программист#1; Программист#2; Программист#3; Программист#4; baseline start none → 2022-04-28 15:47; baseline finish none → 2022-06-17 10:24 |
| 17 | Создание мультемедиа-наполнения | 2022-04-07 → 2022-04-07 15:00 | 2022-05-24 → 2022-05-26 12:00 (+2d) |  | 85d → 44.53d | baseline start none → 2022-04-07 15:00; baseline finish none → 2022-05-26 12:00 |
| 18 | Создание справочной системы | 2022-08-22 → 2022-07-08 09:24 (-45d) | 2022-09-02 → 2022-07-22 10:24 (-42d) |  | 13d → 4.73d | baseline start none → 2022-07-08 09:24; baseline finish none → 2022-07-22 10:24 |
| 19 | **Создание руководства пользователя** | 2022-07-28 → 2022-06-14 15:24 (-44d) | 2022-08-19 → 2022-07-07 17:24 (-43d) | 17d → 17.25d |  | baseline start none → 2022-06-14 15:24; baseline finish none → 2022-07-07 17:24 |
| 20 | Разработка дизайна руководства | 2022-07-28 → 2022-06-14 15:24 (-44d) | 2022-08-03 → 2022-06-21 15:24 (-43d) |  |  | baseline start none → 2022-06-14 15:24; baseline finish none → 2022-06-21 15:24 |
| 21 | Написание руководства пользователя | 2022-08-01 → 2022-06-16 15:24 (-46d) | 2022-08-19 → 2022-07-07 17:24 (-43d) |  |  | baseline start none → 2022-06-16 15:24; baseline finish none → 2022-07-07 17:24 |
| 22 | **Создание web-сайта и поддержка** | 2022-08-01 → 2022-06-16 15:24 (-46d) | 2022-08-31 → 2022-07-19 15:49 (-43d) | 23d → 23.05d |  | baseline start none → 2022-06-16 15:24; baseline finish none → 2022-07-19 15:49 |
| 23 | Разработка структуры сайта | 2022-08-01 → 2022-06-16 15:24 (-46d) | 2022-08-01 → 2022-06-17 15:24 (-45d) |  |  | baseline start none → 2022-06-16 15:24; baseline finish none → 2022-06-17 15:24 |
| 24 | Разработка дизайна сайта | 2022-08-02 → 2022-06-17 15:24 (-46d) | 2022-08-10 → 2022-06-28 12:49 (-43d) | 1.4w → 1.36w |  | baseline start none → 2022-06-17 15:24; baseline finish none → 2022-06-28 12:49 |
| 25 | Наполнение сайта | 2022-08-11 → 2022-06-28 12:49 (-44d) | 2022-08-31 → 2022-07-19 15:49 (-43d) |  |  | baseline start none → 2022-06-28 12:49; baseline finish none → 2022-07-19 15:49 |
| 26 | Тестирование сайта | 2022-08-25 → 2022-07-12 15:49 (-44d) | 2022-09-21 → 2022-07-28 17:14 (-55d) | 4w → 2.44w |  | resources Ведущий программист; Программист#1; Программист#2 → Ведущий программист; Программист#1; Программист#2; Программист#3; Программист#4; baseline start none → 2022-07-12 15:49; baseline finish none → 2022-07-28 17:14 |
| 27 | Сдача сайта в эксплуатацию | 2022-09-21 → 2022-07-28 17:14 (-55d) | 2022-09-21 → 2022-07-28 17:14 (-55d) |  |  | baseline start none → 2022-07-28 17:14; baseline finish none → 2022-07-28 17:14 |

## Version 3 (saved 2022-03-15)

Note of the change: done lab3

Last finish stays 2022-07-28.

Changed:

| ID | Task | Start | Finish | Duration | Total float | Other |
| --- | --- | --- | --- | --- | --- | --- |
| 2 | **Создание интерфейса** |  | 2022-06-28 15:24 → 2022-06-28 14:33 | 78.68d → 78.57d |  | baseline finish 2022-06-28 15:24 → 2022-06-28 14:33 |
| 7 | Программирование интерфейса | 2022-06-17 10:24 → 2022-06-17 09:33 | 2022-06-28 15:24 → 2022-06-28 14:33 |  |  | resources Программист#3; Программист#4; Программист#2; Программист#1 → Программист#3; Программист#4; Программист#1; Программист#2; baseline start 2022-06-17 10:24 → 2022-06-17 09:33; baseline finish 2022-06-28 15:24 → 2022-06-28 14:33 |
| 8 | **Построение базы объектов** | 2022-03-01 10:00 → 2022-03-24 14:00 (+23d) | 2022-07-26 11:47 → 2022-07-28 15:00 (+2d) | 98.22d → 85.12d | 2.56d → 0.03d | baseline start 2022-03-01 10:00 → 2022-03-24 14:00; baseline finish 2022-07-26 11:47 → 2022-07-28 15:00 |
| 9 | Анализ и построение структуры базы объектов | 2022-03-01 10:00 → 2022-03-24 14:00 (+23d) | 2022-03-22 11:00 → 2022-04-07 15:00 (+16d) |  | 2.56d → 0.03d | baseline start 2022-03-01 10:00 → 2022-03-24 14:00; baseline finish 2022-03-22 11:00 → 2022-04-07 15:00 |
| 10 | Программирование средств обработки базы объектов | 2022-03-22 11:00 → 2022-04-07 15:00 (+16d) | 2022-04-26 11:47 → 2022-04-28 15:00 (+2d) |  | 2.56d → 0.03d | baseline start 2022-03-22 11:00 → 2022-04-07 15:00; baseline finish 2022-04-26 11:47 → 2022-04-28 15:00 |
| 11 | Наполнение базы объектов | 2022-04-26 11:47 → 2022-04-28 15:00 (+2d) | 2022-07-26 11:47 → 2022-07-28 15:00 (+2d) |  | 2.56d → 0.03d | baseline start 2022-04-26 11:47 → 2022-04-28 15:00; baseline finish 2022-07-26 11:47 → 2022-07-28 15:00 |
| 12 | **Создание ядра GIS** |  | 2022-06-17 10:24 → 2022-06-17 09:33 | 71.18d → 71.07d |  | baseline finish 2022-06-17 10:24 → 2022-06-17 09:33 |
| 13 | Анализ и проектирование ядра |  | 2022-04-07 15:00 → 2022-03-24 12:00 (-14d) | 5.03w → 3.05w |  | baseline finish 2022-04-07 15:00 → 2022-03-24 12:00 |
| 14 | Создание модели ядра | 2022-04-07 15:00 → 2022-03-24 12:00 (-14d) | 2022-04-21 15:47 → 2022-04-18 12:13 (-3d) | 2.02w → 3.41w |  | resources Ведущий программист; Программист#1; Программист#2; Программист#3; Программист#4 → Ведущий программист; Программист#1; Программист#2; baseline start 2022-04-07 15:00 → 2022-03-24 12:00; baseline finish 2022-04-21 15:47 → 2022-04-18 12:13 |
| 15 | Тестирование модели ядра | 2022-04-21 15:47 → 2022-04-18 12:13 (-3d) | 2022-04-28 15:47 → 2022-04-25 12:13 (-3d) |  |  | baseline start 2022-04-21 15:47 → 2022-04-18 12:13; baseline finish 2022-04-28 15:47 → 2022-04-25 12:13 |
| 16 | Создание рабочей версии ядра | 2022-04-28 15:47 → 2022-04-25 12:13 (-3d) | 2022-06-17 10:24 → 2022-06-17 09:33 | 6.09w → 6.73w |  | baseline start 2022-04-28 15:47 → 2022-04-25 12:13; baseline finish 2022-06-17 10:24 → 2022-06-17 09:33 |
| 18 | Создание справочной системы | 2022-07-08 09:24 → 2022-07-07 17:33 (-1d) | 2022-07-22 10:24 → 2022-07-22 09:33 |  | 4.73d → 4.58d | baseline start 2022-07-08 09:24 → 2022-07-07 17:33; baseline finish 2022-07-22 10:24 → 2022-07-22 09:33 |
| 19 | **Создание руководства пользователя** | 2022-06-14 15:24 → 2022-06-14 14:33 | 2022-07-07 17:24 → 2022-07-07 16:33 |  |  | baseline start 2022-06-14 15:24 → 2022-06-14 14:33; baseline finish 2022-07-07 17:24 → 2022-07-07 16:33 |
| 20 | Разработка дизайна руководства | 2022-06-14 15:24 → 2022-06-14 14:33 | 2022-06-21 15:24 → 2022-06-21 14:33 |  |  | baseline start 2022-06-14 15:24 → 2022-06-14 14:33; baseline finish 2022-06-21 15:24 → 2022-06-21 14:33 |
| 21 | Написание руководства пользователя | 2022-06-16 15:24 → 2022-06-16 14:33 | 2022-07-07 17:24 → 2022-07-07 16:33 |  |  | baseline start 2022-06-16 15:24 → 2022-06-16 14:33; baseline finish 2022-07-07 17:24 → 2022-07-07 16:33 |
| 22 | **Создание web-сайта и поддержка** | 2022-06-16 15:24 → 2022-06-16 14:33 | 2022-07-19 15:49 → 2022-07-19 14:07 | 23.05d → 22.95d |  | baseline start 2022-06-16 15:24 → 2022-06-16 14:33; baseline finish 2022-07-19 15:49 → 2022-07-19 14:07 |
| 23 | Разработка структуры сайта | 2022-06-16 15:24 → 2022-06-16 14:33 | 2022-06-17 15:24 → 2022-06-17 14:33 |  |  | baseline start 2022-06-16 15:24 → 2022-06-16 14:33; baseline finish 2022-06-17 15:24 → 2022-06-17 14:33 |
| 24 | Разработка дизайна сайта | 2022-06-17 15:24 → 2022-06-17 14:33 | 2022-06-28 12:49 → 2022-06-28 11:07 | 1.36w → 1.34w |  | baseline start 2022-06-17 15:24 → 2022-06-17 14:33; baseline finish 2022-06-28 12:49 → 2022-06-28 11:07 |
| 25 | Наполнение сайта | 2022-06-28 12:49 → 2022-06-28 11:07 | 2022-07-19 15:49 → 2022-07-19 14:07 |  |  | baseline start 2022-06-28 12:49 → 2022-06-28 11:07; baseline finish 2022-07-19 15:49 → 2022-07-19 14:07 |
| 26 | Тестирование сайта | 2022-07-12 15:49 → 2022-07-12 14:07 | 2022-07-28 17:14 → 2022-07-28 15:12 | 2.44w → 2.43w |  | baseline start 2022-07-12 15:49 → 2022-07-12 14:07; baseline finish 2022-07-28 17:14 → 2022-07-28 15:12 |
| 27 | Сдача сайта в эксплуатацию | 2022-07-28 17:14 → 2022-07-28 15:12 | 2022-07-28 17:14 → 2022-07-28 15:12 |  |  | baseline start 2022-07-28 17:14 → 2022-07-28 15:12; baseline finish 2022-07-28 17:14 → 2022-07-28 15:12 |
