# Task3

How a schedule from MS Project changed from version to version. A marks actual dates.

## Version 1 (data date 2022-04-22, saved 2022-03-21, file Task3.mpp)

Note of the change: done lab4

| ID | WBS | Task | Duration | Start | Finish | Predecessors | Complete | Total float | Constraint |
| --- | --- | --- | --- | --- | --- | --- | --- | --- | --- |
| 1 |  | Начало проекта | 0w | 2022-03-01 09:00 | 2022-03-01 09:00 |  |  | 0d |  |
| 2 | 2 | **Создание интерфейса** | 92.91d | 2022-03-01 09:00 A | 2022-07-18 17:16 | 1 | 87% | 0d |  |
| 3 | 2.1 | **Разработка дизайна интерфейса** | 28.12d | 2022-03-01 09:00 A | 2022-04-12 10:00 A |  | 100% |  |  |
| 4 |  | Разработка 2D графических элементов | 4.12w | 2022-03-01 09:00 A | 2022-03-31 18:00 A |  | 100% |  |  |
| 5 |  | Разработка 3D графических элементов | 2.2w | 2022-03-01 09:00 A | 2022-03-18 11:00 A | 4SS | 100% |  |  |
| 6 |  | Создание заставки | 3.3w | 2022-03-18 12:00 A | 2022-04-12 10:00 A | 5 | 100% |  |  |
| 7 |  | Программирование интерфейса | 1.5w | 2022-07-07 12:16 | 2022-07-18 17:16 | 3, 12 |  | 0d |  |
| 8 | 3 | **Построение базы объектов** | 88.25d | 2022-03-24 14:00 | 2022-08-02 16:00 |  |  | 11.24d |  |
| 9 |  | Анализ и построение структуры базы объектов | 2w | 2022-03-24 14:00 | 2022-04-12 16:00 |  |  | 11.24d |  |
| 10 |  | Программирование средств обработки базы объектов | 3w | 2022-04-12 16:00 | 2022-05-05 16:00 | 9 |  | 11.24d |  |
| 11 |  | Наполнение базы объектов | 12w | 2022-05-05 16:00 | 2022-08-02 16:00 | 10 |  | 11.24d |  |
| 12 | 4 | **Создание ядра GIS** | 85.41d | 2022-03-01 09:00 A | 2022-07-07 12:16 |  | 18% | 0d |  |
| 13 |  | Анализ и проектирование ядра | 3.97w | 2022-03-01 09:00 | 2022-05-05 11:42 |  |  | 0d |  |
| 14 |  | Создание модели ядра | 3.41w | 2022-03-24 12:00 A | 2022-05-12 15:56 | 13 | 80% | 0d |  |
| 15 |  | Тестирование модели ядра | 1w | 2022-05-12 15:56 | 2022-05-19 15:56 | 14 |  | 0d |  |
| 16 |  | Создание рабочей версии ядра | 6.73w | 2022-05-19 15:56 | 2022-07-07 12:16 | 15 |  | 0d |  |
| 17 |  | Создание мультемедиа-наполнения | 6w | 2022-04-12 10:00 | 2022-05-30 18:00 | 3 |  | 55.99d |  |
| 18 |  | Создание справочной системы | 2w | 2022-07-28 11:16 | 2022-08-11 12:16 | 7 |  | 4.58d |  |
| 19 | 7 | **Создание руководства пользователя** | 17.25d | 2022-07-04 17:16 | 2022-07-28 10:16 | 7FS-10d |  | 0d |  |
| 20 |  | Разработка дизайна руководства | 1w | 2022-07-04 17:16 | 2022-07-11 17:16 |  |  | 0d |  |
| 21 |  | Написание руководства пользователя | 3w | 2022-07-06 17:16 | 2022-07-28 10:16 | 20SS+2d |  | 0d |  |
| 22 | 8 | **Создание web-сайта и поддержка** | 22.95d | 2022-07-06 17:16 | 2022-08-08 16:50 |  |  | 0d |  |
| 23 |  | Разработка структуры сайта | 1d | 2022-07-06 17:16 | 2022-07-07 17:16 | 21SS |  | 0d |  |
| 24 |  | Разработка дизайна сайта | 1.34w | 2022-07-07 17:16 | 2022-07-18 14:50 | 23 |  | 0d |  |
| 25 |  | Наполнение сайта | 3w | 2022-07-18 14:50 | 2022-08-08 16:50 | 24 |  | 0d |  |
| 26 |  | Тестирование сайта | 2.43w | 2022-08-01 16:50 | 2022-08-17 17:55 | 22FS-1w |  | 0d |  |
| 27 |  | Сдача сайта в эксплуатацию | 0w | 2022-08-17 17:55 | 2022-08-17 17:55 | 26 |  | 0d |  |
| 28 | 11 | **Совещание** | 108.12d | 2022-03-02 09:00 | 2022-08-10 10:00 |  |  | 0d |  |
| 29 |  | Совещание 1 | 1h | 2022-03-02 09:00 | 2022-03-02 10:00 |  |  |  | start no earlier than 2022-03-02 09:00 |
| 30 |  | Совещание 2 | 1h | 2022-03-09 09:00 | 2022-03-09 10:00 |  |  |  | start no earlier than 2022-03-09 09:00 |
| 31 |  | Совещание 3 | 1h | 2022-03-16 09:00 | 2022-03-16 10:00 |  |  |  | start no earlier than 2022-03-16 09:00 |
| 32 |  | Совещание 4 | 1h | 2022-03-23 09:00 | 2022-03-23 10:00 |  |  |  | start no earlier than 2022-03-23 09:00 |
| 33 |  | Совещание 5 | 1h | 2022-03-30 09:00 | 2022-03-30 10:00 |  |  |  | start no earlier than 2022-03-30 09:00 |
| 34 |  | Совещание 6 | 1h | 2022-04-06 09:00 | 2022-04-06 10:00 |  |  |  | start no earlier than 2022-04-06 09:00 |
| 35 |  | Совещание 7 | 1h | 2022-04-13 09:00 | 2022-04-13 10:00 |  |  |  | start no earlier than 2022-04-13 09:00 |
| 36 |  | Совещание 8 | 1h | 2022-04-20 09:00 | 2022-04-20 10:00 |  |  |  | start no earlier than 2022-04-20 09:00 |
| 37 |  | Совещание 9 | 1h | 2022-04-27 09:00 | 2022-04-27 10:00 |  |  |  | start no earlier than 2022-04-27 09:00 |
| 38 |  | Совещание 10 | 1h | 2022-05-04 09:00 | 2022-05-04 10:00 |  |  |  | start no earlier than 2022-05-04 09:00 |
| 39 |  | Совещание 11 | 1h | 2022-05-11 09:00 | 2022-05-11 10:00 |  |  |  | start no earlier than 2022-05-11 09:00 |
| 40 |  | Совещание 12 | 1h | 2022-05-18 09:00 | 2022-05-18 10:00 |  |  |  | start no earlier than 2022-05-18 09:00 |
| 41 |  | Совещание 13 | 1h | 2022-05-25 09:00 | 2022-05-25 10:00 |  |  |  | start no earlier than 2022-05-25 09:00 |
| 42 |  | Совещание 14 | 1h | 2022-06-01 09:00 | 2022-06-01 10:00 |  |  |  | start no earlier than 2022-06-01 09:00 |
| 43 |  | Совещание 15 | 1h | 2022-06-08 09:00 | 2022-06-08 10:00 |  |  |  | start no earlier than 2022-06-08 09:00 |
| 44 |  | Совещание 16 | 1h | 2022-06-15 09:00 | 2022-06-15 10:00 |  |  |  | start no earlier than 2022-06-15 09:00 |
| 45 |  | Совещание 17 | 1h | 2022-06-22 09:00 | 2022-06-22 10:00 |  |  |  | start no earlier than 2022-06-22 09:00 |
| 46 |  | Совещание 18 | 1h | 2022-06-29 09:00 | 2022-06-29 10:00 |  |  |  | start no earlier than 2022-06-29 09:00 |
| 47 |  | Совещание 19 | 1h | 2022-07-06 09:00 | 2022-07-06 10:00 |  |  |  | start no earlier than 2022-07-06 09:00 |
| 48 |  | Совещание 20 | 1h | 2022-07-13 09:00 | 2022-07-13 10:00 |  |  |  | start no earlier than 2022-07-13 09:00 |
| 49 |  | Совещание 21 | 1h | 2022-07-20 09:00 | 2022-07-20 10:00 |  |  |  | start no earlier than 2022-07-20 09:00 |
| 50 |  | Совещание 22 | 1h | 2022-07-27 09:00 | 2022-07-27 10:00 |  |  |  | start no earlier than 2022-07-27 09:00 |
| 51 |  | Совещание 23 | 1h | 2022-08-03 09:00 | 2022-08-03 10:00 |  |  |  | start no earlier than 2022-08-03 09:00 |
| 52 |  | Совещание 24 | 1h | 2022-08-10 09:00 | 2022-08-10 10:00 |  |  |  | start no earlier than 2022-08-10 09:00 |

## Version 2 (data date 2022-04-22, saved 2022-03-21, file Task32.mpp)

Note of the change: done lab4

Last finish 2022-08-17 → 2022-08-03 (-14d). Complete tasks 3 → 15.

Removed: 51 Совещание 23; 52 Совещание 24

Changed:

| ID | Task | Start | Finish | Duration | Complete | Total float | Other |
| --- | --- | --- | --- | --- | --- | --- | --- |
| 1 | Начало проекта | 2022-03-01 09:00 A | 2022-03-01 09:00 A |  | 0% → 100% | 0d → none |  |
| 2 | **Создание интерфейса** |  | 2022-07-18 17:16 → 2022-07-04 17:16 (-14d) | 92.91d → 82.91d |  |  |  |
| 7 | Программирование интерфейса | 2022-07-07 12:16 → 2022-06-23 12:16 (-14d) | 2022-07-18 17:16 → 2022-07-04 17:16 (-14d) |  |  |  |  |
| 8 | **Построение базы объектов** | 2022-03-24 14:00 A | 2022-08-02 16:00 → 2022-08-02 15:42 | 88.25d → 88.21d | 0% → 22% | 11.24d → 0.93d |  |
| 9 | Анализ и построение структуры базы объектов | 2022-03-24 14:00 A | 2022-04-12 16:00 → 2022-04-12 15:42 A |  | 0% → 100% | 11.24d → none |  |
| 10 | Программирование средств обработки базы объектов | 2022-04-12 16:00 → 2022-04-12 15:42 A | 2022-05-05 16:00 → 2022-05-05 15:42 |  | 0% → 55% | 11.24d → 0.93d |  |
| 11 | Наполнение базы объектов | 2022-05-05 16:00 → 2022-05-05 15:42 | 2022-08-02 16:00 → 2022-08-02 15:42 |  |  | 11.24d → 0.93d |  |
| 12 | **Создание ядра GIS** |  | 2022-07-07 12:16 → 2022-06-23 12:16 (-14d) | 85.41d → 75.41d | 18% → 49% |  |  |
| 13 | Анализ и проектирование ядра | 2022-03-01 09:00 A | 2022-05-05 11:42 → 2022-04-19 11:42 A (-16d) | 3.97w → 3.98w | 0% → 100% | 0d → none |  |
| 14 | Создание модели ядра |  | 2022-05-12 15:56 → 2022-04-22 15:56 A (-20d) |  | 80% → 100% | 0d → none |  |
| 15 | Тестирование модели ядра | 2022-05-12 15:56 → 2022-04-22 15:56 A (-20d) | 2022-05-19 15:56 → 2022-04-29 15:56 (-20d) |  | 0% → 5% |  |  |
| 16 | Создание рабочей версии ядра | 2022-05-19 15:56 → 2022-04-29 15:56 (-20d) | 2022-07-07 12:16 → 2022-06-23 12:16 (-14d) |  |  |  |  |
| 17 | Создание мультемедиа-наполнения | 2022-04-12 10:00 A |  |  | 0% → 29% | 55.99d → 45.64d |  |
| 18 | Создание справочной системы | 2022-07-28 11:16 → 2022-07-14 11:16 (-14d) | 2022-08-11 12:16 → 2022-07-28 12:16 (-14d) |  |  | 4.58d → 4.23d |  |
| 19 | **Создание руководства пользователя** | 2022-07-04 17:16 → 2022-06-20 17:16 (-14d) | 2022-07-28 10:16 → 2022-07-14 10:16 (-14d) |  |  |  |  |
| 20 | Разработка дизайна руководства | 2022-07-04 17:16 → 2022-06-20 17:16 (-14d) | 2022-07-11 17:16 → 2022-06-27 17:16 (-14d) |  |  |  |  |
| 21 | Написание руководства пользователя | 2022-07-06 17:16 → 2022-06-22 17:16 (-14d) | 2022-07-28 10:16 → 2022-07-14 10:16 (-14d) |  |  |  |  |
| 22 | **Создание web-сайта и поддержка** | 2022-07-06 17:16 → 2022-06-22 17:16 (-14d) | 2022-08-08 16:50 → 2022-07-25 14:02 (-14d) | 22.95d → 22.6d |  |  |  |
| 23 | Разработка структуры сайта | 2022-07-06 17:16 → 2022-06-22 17:16 (-14d) | 2022-07-07 17:16 → 2022-06-23 17:16 (-14d) |  |  |  |  |
| 24 | Разработка дизайна сайта | 2022-07-07 17:16 → 2022-06-23 17:16 (-14d) | 2022-07-18 14:50 → 2022-07-04 11:02 (-14d) | 1.34w → 1.27w |  |  |  |
| 25 | Наполнение сайта | 2022-07-18 14:50 → 2022-07-04 11:02 (-14d) | 2022-08-08 16:50 → 2022-07-25 14:02 (-14d) |  |  |  |  |
| 26 | Тестирование сайта | 2022-08-01 16:50 → 2022-07-18 14:02 (-14d) | 2022-08-17 17:55 → 2022-08-03 15:06 (-14d) |  |  |  |  |
| 27 | Сдача сайта в эксплуатацию | 2022-08-17 17:55 → 2022-08-03 15:06 (-14d) | 2022-08-17 17:55 → 2022-08-03 15:06 (-14d) |  |  |  |  |
| 28 | **Совещание** | 2022-03-02 09:00 A | 2022-08-10 10:00 → 2022-07-27 10:00 (-14d) | 108.12d → 98.12d | 0% → 36% |  |  |
| 29 | Совещание 1 | 2022-03-02 09:00 A | 2022-03-02 10:00 A |  | 0% → 100% |  |  |
| 30 | Совещание 2 | 2022-03-09 09:00 A | 2022-03-09 10:00 A |  | 0% → 100% |  |  |
| 31 | Совещание 3 | 2022-03-16 09:00 A | 2022-03-16 10:00 A |  | 0% → 100% |  | resources 3D аниматор; Web-дизайнер; Ведущий программист; Мультимедиа-корреспондент; Технический писатель; Художник-дизайнер → 3D аниматор; Web-дизайнер; Ведущий программист; Мультимедиа-корреспондент; Системный аналитик; Технический писатель; Художник-дизайнер |
| 32 | Совещание 4 | 2022-03-23 09:00 A | 2022-03-23 10:00 A |  | 0% → 100% |  |  |
| 33 | Совещание 5 | 2022-03-30 09:00 A | 2022-03-30 10:00 A |  | 0% → 100% |  |  |
| 34 | Совещание 6 | 2022-04-06 09:00 A | 2022-04-06 10:00 A |  | 0% → 100% |  | resources 3D аниматор; Web-дизайнер; Ведущий программист; Мультимедиа-корреспондент; Системный аналитик; Технический писатель; Художник-дизайнер → 3D аниматор; Web-дизайнер; Ведущий программист; Мультимедиа-корреспондент; Технический писатель; Художник-дизайнер |
| 35 | Совещание 7 | 2022-04-13 09:00 A | 2022-04-13 10:00 A |  | 0% → 100% |  |  |
| 36 | Совещание 8 | 2022-04-20 09:00 A | 2022-04-20 10:00 A |  | 0% → 100% |  |  |

## Version 3 (data date 2022-04-22, saved 2022-03-28, file Task31.mpp)

Note of the change: done lab4

Last finish 2022-08-03 → 2022-07-28 (-6d).

Changed:

| ID | Task | Start | Finish | Duration | Complete | Total float | Other |
| --- | --- | --- | --- | --- | --- | --- | --- |
| 2 | **Создание интерфейса** |  | 2022-07-04 17:16 → 2022-06-28 14:33 (-6d) | 82.91d → 78.57d | 87% → 84% |  |  |
| 3 | **Разработка дизайна интерфейса** |  | 2022-04-12 10:00 A → 2022-04-07 15:00 A (-5d) | 28.12d → 25.62d |  |  |  |
| 4 | Разработка 2D графических элементов |  | 2022-03-31 18:00 A → 2022-03-24 12:00 A (-7d) | 4.12w → 3w |  |  |  |
| 5 | Разработка 3D графических элементов |  | 2022-03-18 11:00 A → 2022-03-17 11:00 A (-1d) | 2.2w → 2w |  |  |  |
| 6 | Создание заставки | 2022-03-18 12:00 A → 2022-03-17 12:00 A (-1d) | 2022-04-12 10:00 A → 2022-04-07 15:00 A (-5d) | 3.3w → 3w |  |  |  |
| 7 | Программирование интерфейса | 2022-06-23 12:16 → 2022-06-17 09:33 (-6d) | 2022-07-04 17:16 → 2022-06-28 14:33 (-6d) |  |  |  |  |
| 8 | **Построение базы объектов** |  | 2022-08-02 15:42 → 2022-07-28 15:00 (-5d) | 88.21d → 85.12d | 22% → 25% | 0.93d → 0.03d |  |
| 9 | Анализ и построение структуры базы объектов |  | 2022-04-12 15:42 A → 2022-04-07 15:00 A (-5d) |  |  |  |  |
| 10 | Программирование средств обработки базы объектов | 2022-04-12 15:42 A → 2022-04-07 15:00 A (-5d) | 2022-05-05 15:42 → 2022-04-28 15:00 (-7d) |  | 55% → 76% | 0.93d → 0.03d |  |
| 11 | Наполнение базы объектов | 2022-05-05 15:42 → 2022-04-28 15:00 (-7d) | 2022-08-02 15:42 → 2022-07-28 15:00 (-5d) |  |  | 0.93d → 0.03d |  |
| 12 | **Создание ядра GIS** |  | 2022-06-23 12:16 → 2022-06-17 09:33 (-6d) | 75.41d → 71.07d | 49% → 52% |  |  |
| 13 | Анализ и проектирование ядра |  | 2022-04-19 11:42 A → 2022-03-24 12:00 A (-26d) | 3.98w → 3.05w |  |  |  |
| 14 | Создание модели ядра |  | 2022-04-22 15:56 A → 2022-04-18 12:13 A (-4d) |  |  |  |  |
| 15 | Тестирование модели ядра | 2022-04-22 15:56 A → 2022-04-18 12:13 A (-4d) | 2022-04-29 15:56 → 2022-04-25 12:13 (-4d) |  | 5% → 92% |  |  |
| 16 | Создание рабочей версии ядра | 2022-04-29 15:56 → 2022-04-25 12:13 (-4d) | 2022-06-23 12:16 → 2022-06-17 09:33 (-6d) |  |  |  |  |
| 17 | Создание мультемедиа-наполнения | 2022-04-12 10:00 A → 2022-04-07 15:00 A (-5d) | 2022-05-30 18:00 → 2022-05-26 12:00 (-4d) |  | 29% → 37% | 45.64d → 44.28d |  |
| 18 | Создание справочной системы | 2022-07-14 11:16 → 2022-07-07 17:33 (-7d) | 2022-07-28 12:16 → 2022-07-22 09:33 (-6d) |  |  | 4.23d → 4.58d |  |
| 19 | **Создание руководства пользователя** | 2022-06-20 17:16 → 2022-06-14 14:33 (-6d) | 2022-07-14 10:16 → 2022-07-07 16:33 (-7d) |  |  |  |  |
| 20 | Разработка дизайна руководства | 2022-06-20 17:16 → 2022-06-14 14:33 (-6d) | 2022-06-27 17:16 → 2022-06-21 14:33 (-6d) |  |  |  |  |
| 21 | Написание руководства пользователя | 2022-06-22 17:16 → 2022-06-16 14:33 (-6d) | 2022-07-14 10:16 → 2022-07-07 16:33 (-7d) |  |  |  |  |
| 22 | **Создание web-сайта и поддержка** | 2022-06-22 17:16 → 2022-06-16 14:33 (-6d) | 2022-07-25 14:02 → 2022-07-19 14:07 (-6d) | 22.6d → 22.95d |  |  |  |
| 23 | Разработка структуры сайта | 2022-06-22 17:16 → 2022-06-16 14:33 (-6d) | 2022-06-23 17:16 → 2022-06-17 14:33 (-6d) |  |  |  |  |
| 24 | Разработка дизайна сайта | 2022-06-23 17:16 → 2022-06-17 14:33 (-6d) | 2022-07-04 11:02 → 2022-06-28 11:07 (-6d) | 1.27w → 1.34w |  |  |  |
| 25 | Наполнение сайта | 2022-07-04 11:02 → 2022-06-28 11:07 (-6d) | 2022-07-25 14:02 → 2022-07-19 14:07 (-6d) |  |  |  |  |
| 26 | Тестирование сайта | 2022-07-18 14:02 → 2022-07-12 14:07 (-6d) | 2022-08-03 15:06 → 2022-07-28 15:12 (-6d) |  |  |  |  |
| 27 | Сдача сайта в эксплуатацию | 2022-08-03 15:06 → 2022-07-28 15:12 (-6d) | 2022-08-03 15:06 → 2022-07-28 15:12 (-6d) |  |  |  |  |
| 30 | Совещание 2 |  |  |  |  |  | resources Web-дизайнер; Ведущий программист; Мультимедиа-корреспондент; Системный аналитик; Технический писатель; Художник-дизайнер → 3D аниматор; Web-дизайнер; Ведущий программист; Мультимедиа-корреспондент; Системный аналитик; Технический писатель; Художник-дизайнер |
| 34 | Совещание 6 |  |  |  |  |  | resources 3D аниматор; Web-дизайнер; Ведущий программист; Мультимедиа-корреспондент; Технический писатель; Художник-дизайнер → 3D аниматор; Web-дизайнер; Ведущий программист; Мультимедиа-корреспондент; Системный аналитик; Технический писатель; Художник-дизайнер |

## Version 4 (data date 2022-04-22, saved 2022-03-28, file Task32.mpp)

Note of the change: done lab4

Last finish stays 2022-07-28. Complete tasks 15 → 14.

Changed:

| ID | Task | Finish | Duration | Complete | Total float | Other |
| --- | --- | --- | --- | --- | --- | --- |
| 2 | **Создание интерфейса** |  |  | 84% → 87% |  |  |
| 3 | **Разработка дизайна интерфейса** | 2022-04-07 15:00 A → 2022-04-11 10:00 A (+4d) | 25.62d → 27.12d |  |  |  |
| 4 | Разработка 2D графических элементов | 2022-03-24 12:00 A → 2022-03-31 18:00 A (+7d) | 3w → 4.12w |  |  |  |
| 5 | Разработка 3D графических элементов | 2022-03-17 11:00 A → 2022-03-18 11:00 A (+1d) | 2w → 2.2w |  |  |  |
| 6 | Создание заставки | 2022-04-07 15:00 A → 2022-04-11 10:00 A (+4d) | 3w → 3.3w |  |  |  |
| 12 | **Создание ядра GIS** |  |  | 52% → 47% |  |  |
| 14 | Создание модели ядра | 2022-04-18 12:13 A → 2022-04-18 12:13 |  | 100% → 80% | none → 4.6d |  |
| 30 | Совещание 2 |  |  |  |  | resources 3D аниматор; Web-дизайнер; Ведущий программист; Мультимедиа-корреспондент; Системный аналитик; Технический писатель; Художник-дизайнер → Web-дизайнер; Ведущий программист; Мультимедиа-корреспондент; Системный аналитик; Технический писатель; Художник-дизайнер |

## Version 5 (data date 2022-04-22, saved 2022-03-28, file Task34.mpp)

Note of the change: done lab4

Last finish stays 2022-07-28.

Changed:

| ID | Task | Other |
| --- | --- | --- |
| 29 | Совещание 1 | resources 3D аниматор; Web-дизайнер; Ведущий программист; Мультимедиа-корреспондент; Системный аналитик; Технический писатель; Художник-дизайнер → 3D аниматор; Web-дизайнер; Ведущий программист; Мультимедиа-корреспондент; Системный аналитик [70%]; Технический писатель; Художник-дизайнер |
| 36 | Совещание 8 | resources 3D аниматор; Web-дизайнер; Ведущий программист; Мультимедиа-корреспондент; Системный аналитик; Технический писатель; Художник-дизайнер → 3D аниматор; Web-дизайнер; Ведущий программист; Мультимедиа-корреспондент; Технический писатель; Художник-дизайнер |
| 37 | Совещание 9 | resources 3D аниматор; Web-дизайнер; Ведущий программист; Мультимедиа-корреспондент; Системный аналитик; Технический писатель; Художник-дизайнер → 3D аниматор; Web-дизайнер; Ведущий программист; Мультимедиа-корреспондент; Технический писатель; Художник-дизайнер |
| 38 | Совещание 10 | resources 3D аниматор; Web-дизайнер; Ведущий программист; Мультимедиа-корреспондент; Системный аналитик; Технический писатель; Художник-дизайнер → 3D аниматор; Web-дизайнер; Ведущий программист; Мультимедиа-корреспондент; Технический писатель; Художник-дизайнер |
| 39 | Совещание 11 | resources 3D аниматор; Web-дизайнер; Ведущий программист; Мультимедиа-корреспондент; Системный аналитик; Технический писатель; Художник-дизайнер → 3D аниматор; Web-дизайнер; Ведущий программист; Мультимедиа-корреспондент; Технический писатель; Художник-дизайнер |
| 40 | Совещание 12 | resources 3D аниматор; Web-дизайнер; Ведущий программист; Мультимедиа-корреспондент; Системный аналитик; Технический писатель; Художник-дизайнер → 3D аниматор; Web-дизайнер; Ведущий программист; Мультимедиа-корреспондент; Технический писатель; Художник-дизайнер |
| 41 | Совещание 13 | resources 3D аниматор; Web-дизайнер; Ведущий программист; Мультимедиа-корреспондент; Системный аналитик; Технический писатель; Художник-дизайнер → 3D аниматор; Web-дизайнер; Ведущий программист; Мультимедиа-корреспондент; Технический писатель; Художник-дизайнер |
| 42 | Совещание 14 | resources 3D аниматор; Web-дизайнер; Ведущий программист; Мультимедиа-корреспондент; Системный аналитик; Технический писатель; Художник-дизайнер → 3D аниматор; Web-дизайнер; Ведущий программист; Мультимедиа-корреспондент; Технический писатель; Художник-дизайнер |
| 43 | Совещание 15 | resources 3D аниматор; Web-дизайнер; Ведущий программист; Мультимедиа-корреспондент; Системный аналитик; Технический писатель; Художник-дизайнер → 3D аниматор; Web-дизайнер; Ведущий программист; Технический писатель; Художник-дизайнер |
| 44 | Совещание 16 | resources 3D аниматор; Web-дизайнер; Ведущий программист; Мультимедиа-корреспондент; Системный аналитик; Технический писатель; Художник-дизайнер → 3D аниматор; Web-дизайнер; Ведущий программист; Технический писатель; Художник-дизайнер |
| 45 | Совещание 17 | resources 3D аниматор; Web-дизайнер; Ведущий программист; Мультимедиа-корреспондент; Системный аналитик; Технический писатель; Художник-дизайнер → 3D аниматор; Web-дизайнер; Ведущий программист; Технический писатель; Художник-дизайнер |
| 46 | Совещание 18 | resources 3D аниматор; Web-дизайнер; Ведущий программист; Мультимедиа-корреспондент; Системный аналитик; Технический писатель; Художник-дизайнер → 3D аниматор; Web-дизайнер; Ведущий программист; Технический писатель; Художник-дизайнер |
| 47 | Совещание 19 | resources 3D аниматор; Web-дизайнер; Ведущий программист; Мультимедиа-корреспондент; Системный аналитик; Технический писатель; Художник-дизайнер → Web-дизайнер; Ведущий программист; Технический писатель |
| 48 | Совещание 20 | resources 3D аниматор; Web-дизайнер; Ведущий программист; Мультимедиа-корреспондент; Системный аналитик; Технический писатель; Художник-дизайнер → Web-дизайнер; Ведущий программист; Технический писатель |
| 49 | Совещание 21 | resources 3D аниматор; Web-дизайнер; Ведущий программист; Мультимедиа-корреспондент; Системный аналитик; Технический писатель; Художник-дизайнер → Web-дизайнер; Ведущий программист; Технический писатель |
| 50 | Совещание 22 | resources 3D аниматор; Web-дизайнер; Ведущий программист; Мультимедиа-корреспондент; Системный аналитик; Технический писатель; Художник-дизайнер → Ведущий программист; Технический писатель |
