# Task3

How a schedule from MS Project changed from version to version. A marks actual dates.

## Version 1 (data date 2022-04-22, saved 2022-03-22, file Task31.mpp)

Note of the change: done lab4

| ID | WBS | Task | Duration | Start | Finish | Predecessors | Total float | Constraint |
| --- | --- | --- | --- | --- | --- | --- | --- | --- |
| 1 |  | Начало проекта | 0w | 2022-03-01 09:00 | 2022-03-01 09:00 |  | 44.28d |  |
| 2 | 2 | **Создание интерфейса** | 78.57d | 2022-03-01 09:00 | 2022-06-28 14:33 | 1 | 0d |  |
| 3 | 2.1 | **Разработка дизайна интерфейса** | 25.62d | 2022-03-01 09:00 | 2022-04-07 15:00 |  | 44.28d |  |
| 4 |  | Разработка 2D графических элементов | 3w | 2022-03-01 09:00 | 2022-03-24 12:00 |  | 44.28d |  |
| 5 |  | Разработка 3D графических элементов | 2w | 2022-03-01 09:00 | 2022-03-17 11:00 | 4SS | 44.28d |  |
| 6 |  | Создание заставки | 3w | 2022-03-17 12:00 | 2022-04-07 15:00 | 5 | 44.28d |  |
| 7 |  | Программирование интерфейса | 1.5w | 2022-06-17 09:33 | 2022-06-28 14:33 | 3, 12 | 0d |  |
| 8 | 3 | **Построение базы объектов** | 85.12d | 2022-03-24 14:00 | 2022-07-28 15:00 |  | 0.03d |  |
| 9 |  | Анализ и построение структуры базы объектов | 2w | 2022-03-24 14:00 | 2022-04-07 15:00 |  | 0.03d |  |
| 10 |  | Программирование средств обработки базы объектов | 3w | 2022-04-07 15:00 | 2022-04-28 15:00 | 9 | 0.03d |  |
| 11 |  | Наполнение базы объектов | 12w | 2022-04-28 15:00 | 2022-07-28 15:00 | 10 | 0.03d |  |
| 12 | 4 | **Создание ядра GIS** | 71.07d | 2022-03-01 09:00 | 2022-06-17 09:33 |  | 0d |  |
| 13 |  | Анализ и проектирование ядра | 3.05w | 2022-03-01 09:00 | 2022-03-24 12:00 |  | 0d |  |
| 14 |  | Создание модели ядра | 3.41w | 2022-03-24 12:00 | 2022-04-18 12:13 | 13 | 0d |  |
| 15 |  | Тестирование модели ядра | 1w | 2022-04-18 12:13 | 2022-04-25 12:13 | 14 | 0d |  |
| 16 |  | Создание рабочей версии ядра | 6.73w | 2022-04-25 12:13 | 2022-06-17 09:33 | 15 | 0d |  |
| 17 |  | Создание мультемедиа-наполнения | 6w | 2022-04-07 15:00 | 2022-05-26 12:00 | 3 | 44.28d |  |
| 18 |  | Создание справочной системы | 2w | 2022-07-07 17:33 | 2022-07-22 09:33 | 7 | 4.58d |  |
| 19 | 7 | **Создание руководства пользователя** | 17.25d | 2022-06-14 14:33 | 2022-07-07 16:33 | 7FS-10d | 0d |  |
| 20 |  | Разработка дизайна руководства | 1w | 2022-06-14 14:33 | 2022-06-21 14:33 |  | 0d |  |
| 21 |  | Написание руководства пользователя | 3w | 2022-06-16 14:33 | 2022-07-07 16:33 | 20SS+2d | 0d |  |
| 22 | 8 | **Создание web-сайта и поддержка** | 22.95d | 2022-06-16 14:33 | 2022-07-19 14:07 |  | 0d |  |
| 23 |  | Разработка структуры сайта | 1d | 2022-06-16 14:33 | 2022-06-17 14:33 | 21SS | 0d |  |
| 24 |  | Разработка дизайна сайта | 1.34w | 2022-06-17 14:33 | 2022-06-28 11:07 | 23 | 0d |  |
| 25 |  | Наполнение сайта | 3w | 2022-06-28 11:07 | 2022-07-19 14:07 | 24 | 0d |  |
| 26 |  | Тестирование сайта | 2.43w | 2022-07-12 14:07 | 2022-07-28 15:12 | 22FS-1w | 0d |  |
| 27 |  | Сдача сайта в эксплуатацию | 0w | 2022-07-28 15:12 | 2022-07-28 15:12 | 26 | 0d |  |
| 28 | 11 | **Совещание** | 98.12d | 2022-03-02 09:00 | 2022-07-27 10:00 |  | 0d |  |
| 29 |  | Совещание 1 | 1h | 2022-03-02 09:00 | 2022-03-02 10:00 |  |  | start no earlier than 2022-03-02 09:00 |
| 30 |  | Совещание 2 | 1h | 2022-03-09 09:00 | 2022-03-09 10:00 |  |  | start no earlier than 2022-03-09 09:00 |
| 31 |  | Совещание 3 | 1h | 2022-03-16 09:00 | 2022-03-16 10:00 |  |  | start no earlier than 2022-03-16 09:00 |
| 32 |  | Совещание 4 | 1h | 2022-03-23 09:00 | 2022-03-23 10:00 |  |  | start no earlier than 2022-03-23 09:00 |
| 33 |  | Совещание 5 | 1h | 2022-03-30 09:00 | 2022-03-30 10:00 |  |  | start no earlier than 2022-03-30 09:00 |
| 34 |  | Совещание 6 | 1h | 2022-04-06 09:00 | 2022-04-06 10:00 |  |  | start no earlier than 2022-04-06 09:00 |
| 35 |  | Совещание 7 | 1h | 2022-04-13 09:00 | 2022-04-13 10:00 |  |  | start no earlier than 2022-04-13 09:00 |
| 36 |  | Совещание 8 | 1h | 2022-04-20 09:00 | 2022-04-20 10:00 |  |  | start no earlier than 2022-04-20 09:00 |
| 37 |  | Совещание 9 | 1h | 2022-04-27 09:00 | 2022-04-27 10:00 |  |  | start no earlier than 2022-04-27 09:00 |
| 38 |  | Совещание 10 | 1h | 2022-05-04 09:00 | 2022-05-04 10:00 |  |  | start no earlier than 2022-05-04 09:00 |
| 39 |  | Совещание 11 | 1h | 2022-05-11 09:00 | 2022-05-11 10:00 |  |  | start no earlier than 2022-05-11 09:00 |
| 40 |  | Совещание 12 | 1h | 2022-05-18 09:00 | 2022-05-18 10:00 |  |  | start no earlier than 2022-05-18 09:00 |
| 41 |  | Совещание 13 | 1h | 2022-05-25 09:00 | 2022-05-25 10:00 |  |  | start no earlier than 2022-05-25 09:00 |
| 42 |  | Совещание 14 | 1h | 2022-06-01 09:00 | 2022-06-01 10:00 |  |  | start no earlier than 2022-06-01 09:00 |
| 43 |  | Совещание 15 | 1h | 2022-06-08 09:00 | 2022-06-08 10:00 |  |  | start no earlier than 2022-06-08 09:00 |
| 44 |  | Совещание 16 | 1h | 2022-06-15 09:00 | 2022-06-15 10:00 |  |  | start no earlier than 2022-06-15 09:00 |
| 45 |  | Совещание 17 | 1h | 2022-06-22 09:00 | 2022-06-22 10:00 |  |  | start no earlier than 2022-06-22 09:00 |
| 46 |  | Совещание 18 | 1h | 2022-06-29 09:00 | 2022-06-29 10:00 |  |  | start no earlier than 2022-06-29 09:00 |
| 47 |  | Совещание 19 | 1h | 2022-07-06 09:00 | 2022-07-06 10:00 |  |  | start no earlier than 2022-07-06 09:00 |
| 48 |  | Совещание 20 | 1h | 2022-07-13 09:00 | 2022-07-13 10:00 |  |  | start no earlier than 2022-07-13 09:00 |
| 49 |  | Совещание 21 | 1h | 2022-07-20 09:00 | 2022-07-20 10:00 |  |  | start no earlier than 2022-07-20 09:00 |
| 50 |  | Совещание 22 | 1h | 2022-07-27 09:00 | 2022-07-27 10:00 |  |  | start no earlier than 2022-07-27 09:00 |

## Version 2 (data date 2022-04-22, saved 2022-03-22, file Task33.mpp)

Note of the change: done lab4

Last finish stays 2022-07-28. Complete tasks 0 → 15.

Changed:

| ID | Task | Start | Finish | Duration | Complete | Total float |
| --- | --- | --- | --- | --- | --- | --- |
| 1 | Начало проекта | 2022-03-01 09:00 A | 2022-03-01 09:00 A |  | 0% → 100% | 44.28d → none |
| 2 | **Создание интерфейса** | 2022-03-01 09:00 A |  |  | 0% → 85% |  |
| 3 | **Разработка дизайна интерфейса** | 2022-03-01 09:00 A | 2022-04-07 15:00 → 2022-04-11 10:00 A (+4d) | 25.62d → 27.12d | 0% → 100% | 44.28d → none |
| 4 | Разработка 2D графических элементов | 2022-03-01 09:00 A | 2022-03-24 12:00 → 2022-03-25 17:00 A (+1d) | 3w → 3.3w | 0% → 100% | 44.28d → none |
| 5 | Разработка 3D графических элементов | 2022-03-01 09:00 A | 2022-03-17 11:00 → 2022-03-18 11:00 A (+1d) | 2w → 2.2w | 0% → 100% | 44.28d → none |
| 6 | Создание заставки | 2022-03-17 12:00 A | 2022-04-07 15:00 → 2022-04-11 10:00 A (+4d) | 3w → 3.3w | 0% → 100% | 44.28d → none |
| 8 | **Построение базы объектов** | 2022-03-24 14:00 A |  |  | 0% → 25% |  |
| 9 | Анализ и построение структуры базы объектов | 2022-03-24 14:00 A | 2022-04-07 15:00 A |  | 0% → 100% | 0.03d → none |
| 10 | Программирование средств обработки базы объектов | 2022-04-07 15:00 A |  |  | 0% → 76% |  |
| 12 | **Создание ядра GIS** | 2022-03-01 09:00 A |  |  | 0% → 52% |  |
| 13 | Анализ и проектирование ядра | 2022-03-01 09:00 A | 2022-03-24 12:00 A |  | 0% → 100% | 0d → none |
| 14 | Создание модели ядра | 2022-03-24 12:00 A | 2022-04-18 12:13 A |  | 0% → 100% | 0d → none |
| 15 | Тестирование модели ядра | 2022-04-18 12:13 A |  |  | 0% → 92% |  |
| 17 | Создание мультемедиа-наполнения | 2022-04-07 15:00 A |  |  | 0% → 37% |  |
| 28 | **Совещание** | 2022-03-02 09:00 A |  |  | 0% → 36% |  |
| 29 | Совещание 1 | 2022-03-02 09:00 A | 2022-03-02 10:00 A |  | 0% → 100% |  |
| 30 | Совещание 2 | 2022-03-09 09:00 A | 2022-03-09 10:00 A |  | 0% → 100% |  |
| 31 | Совещание 3 | 2022-03-16 09:00 A | 2022-03-16 10:00 A |  | 0% → 100% |  |
| 32 | Совещание 4 | 2022-03-23 09:00 A | 2022-03-23 10:00 A |  | 0% → 100% |  |
| 33 | Совещание 5 | 2022-03-30 09:00 A | 2022-03-30 10:00 A |  | 0% → 100% |  |
| 34 | Совещание 6 | 2022-04-06 09:00 A | 2022-04-06 10:00 A |  | 0% → 100% |  |
| 35 | Совещание 7 | 2022-04-13 09:00 A | 2022-04-13 10:00 A |  | 0% → 100% |  |
| 36 | Совещание 8 | 2022-04-20 09:00 A | 2022-04-20 10:00 A |  | 0% → 100% |  |

## Version 3 (data date 2022-04-22, saved 2022-03-22, file Task35.mpp)

Note of the change: done lab4

Last finish stays 2022-07-28. Complete tasks 15 → 14.

Changed:

| ID | Task | Finish | Duration | Complete | Total float | Other |
| --- | --- | --- | --- | --- | --- | --- |
| 2 | **Создание интерфейса** |  |  | 85% → 87% |  |  |
| 4 | Разработка 2D графических элементов | 2022-03-25 17:00 A → 2022-03-31 18:00 A (+6d) | 3.3w → 4.12w |  |  |  |
| 12 | **Создание ядра GIS** |  |  | 52% → 47% |  |  |
| 14 | Создание модели ядра | 2022-04-18 12:13 A → 2022-04-18 12:13 |  | 100% → 80% | none → 4.6d |  |
| 30 | Совещание 2 |  |  |  |  | resources 3D аниматор; Web-дизайнер; Ведущий программист; Мультимедиа-корреспондент; Системный аналитик; Технический писатель; Художник-дизайнер → Web-дизайнер; Ведущий программист; Мультимедиа-корреспондент; Системный аналитик; Технический писатель; Художник-дизайнер |

## Version 4 (data date 2022-04-22, saved 2022-03-22, file Task34.mpp)

Note of the change: done lab4

Last finish stays 2022-07-28. Complete tasks 14 → 15.

Changed:

| ID | Task | Finish | Complete | Total float |
| --- | --- | --- | --- | --- |
| 12 | **Создание ядра GIS** |  | 47% → 52% |  |
| 14 | Создание модели ядра | 2022-04-18 12:13 A | 80% → 100% | 4.6d → none |

## Version 5 (data date 2022-04-22, saved 2022-03-22, file Task32.mpp)

Note of the change: done lab4

Last finish stays 2022-07-28.

Changed:

| ID | Task | Finish | Duration | Complete | Other |
| --- | --- | --- | --- | --- | --- |
| 2 | **Создание интерфейса** |  |  | 87% → 85% |  |
| 4 | Разработка 2D графических элементов | 2022-03-31 18:00 A → 2022-03-25 17:00 A (-6d) | 4.12w → 3.3w |  |  |
| 30 | Совещание 2 |  |  |  | resources Web-дизайнер; Ведущий программист; Мультимедиа-корреспондент; Системный аналитик; Технический писатель; Художник-дизайнер → 3D аниматор; Web-дизайнер; Ведущий программист; Мультимедиа-корреспондент; Системный аналитик; Технический писатель; Художник-дизайнер |

## Version 6 (data date 2022-04-22, saved 2022-03-22, file Task38.mpp)

Note of the change: done lab4

Last finish stays 2022-07-28. Complete tasks 15 → 14.

Changed:

| ID | Task | Finish | Duration | Complete | Total float | Other |
| --- | --- | --- | --- | --- | --- | --- |
| 2 | **Создание интерфейса** |  |  | 85% → 87% |  |  |
| 4 | Разработка 2D графических элементов | 2022-03-25 17:00 A → 2022-03-31 18:00 A (+6d) | 3.3w → 4.12w |  |  |  |
| 12 | **Создание ядра GIS** |  |  | 52% → 47% |  |  |
| 14 | Создание модели ядра | 2022-04-18 12:13 A → 2022-04-18 12:13 |  | 100% → 80% | none → 4.6d |  |
| 30 | Совещание 2 |  |  |  |  | resources 3D аниматор; Web-дизайнер; Ведущий программист; Мультимедиа-корреспондент; Системный аналитик; Технический писатель; Художник-дизайнер → Web-дизайнер; Ведущий программист; Мультимедиа-корреспондент; Системный аналитик; Технический писатель; Художник-дизайнер |

## Version 7 (data date 2022-04-22, saved 2022-03-22, file Task37.mpp)

Note of the change: done lab4

Last finish 2022-07-28 → 2022-08-18 (+21d).

Changed:

| ID | Task | Start | Finish | Duration | Complete | Total float | Other |
| --- | --- | --- | --- | --- | --- | --- | --- |
| 2 | **Создание интерфейса** |  | 2022-06-28 14:33 → 2022-07-19 11:25 (+21d) | 78.57d → 93.3d |  |  |  |
| 7 | Программирование интерфейса | 2022-06-17 09:33 → 2022-07-07 16:25 (+20d) | 2022-06-28 14:33 → 2022-07-19 11:25 (+21d) |  |  |  |  |
| 12 | **Создание ядра GIS** |  | 2022-06-17 09:33 → 2022-07-07 16:25 (+20d) | 71.07d → 85.8d | 47% → 37% |  |  |
| 14 | Создание модели ядра |  | 2022-04-18 12:13 → 2022-05-06 10:43 (+18d) | 3.41w → 5.77w | 80% → 47% | 4.6d → 0d | resources Ведущий программист; Программист#1; Программист#2 → Программист#1; Программист#2 |
| 15 | Тестирование модели ядра |  | 2022-04-25 12:13 → 2022-05-06 14:57 (+11d) |  |  |  |  |
| 16 | Создание рабочей версии ядра | 2022-04-25 12:13 → 2022-05-06 14:57 (+11d) | 2022-06-17 09:33 → 2022-07-07 16:25 (+20d) | 6.73w → 8.24w |  |  | resources Ведущий программист; Программист#1; Программист#2; Программист#3; Программист#4 → Программист#1; Программист#2; Программист#3; Программист#4 |
| 18 | Создание справочной системы | 2022-07-07 17:33 → 2022-08-01 09:00 (+25d) | 2022-07-22 09:33 → 2022-08-15 11:00 (+24d) |  |  | 4.58d → 3.56d |  |
| 19 | **Создание руководства пользователя** | 2022-06-14 14:33 → 2022-07-05 11:25 (+21d) | 2022-07-07 16:33 → 2022-07-28 15:25 (+21d) | 17.25d → 17.38d |  |  |  |
| 20 | Разработка дизайна руководства | 2022-06-14 14:33 → 2022-07-05 11:25 (+21d) | 2022-06-21 14:33 → 2022-07-12 11:25 (+21d) |  |  |  |  |
| 21 | Написание руководства пользователя | 2022-06-16 14:33 → 2022-07-07 11:25 (+21d) | 2022-07-07 16:33 → 2022-07-28 15:25 (+21d) |  |  |  |  |
| 22 | **Создание web-сайта и поддержка** | 2022-06-16 14:33 → 2022-07-07 11:25 (+21d) | 2022-07-19 14:07 → 2022-08-09 15:25 (+21d) | 22.95d → 23.38d |  |  |  |
| 23 | Разработка структуры сайта | 2022-06-16 14:33 → 2022-07-07 11:25 (+21d) | 2022-06-17 14:33 → 2022-07-08 11:25 (+21d) |  |  |  |  |
| 24 | Разработка дизайна сайта | 2022-06-17 14:33 → 2022-07-08 11:25 (+21d) | 2022-06-28 11:07 → 2022-07-19 12:25 (+21d) | 1.34w → 1.43w |  |  |  |
| 25 | Наполнение сайта | 2022-06-28 11:07 → 2022-07-19 12:25 (+21d) | 2022-07-19 14:07 → 2022-08-09 15:25 (+21d) |  |  |  |  |
| 26 | Тестирование сайта | 2022-07-12 14:07 → 2022-08-02 15:25 (+21d) | 2022-07-28 15:12 → 2022-08-18 16:30 (+21d) |  |  |  |  |
| 27 | Сдача сайта в эксплуатацию | 2022-07-28 15:12 → 2022-08-18 16:30 (+21d) | 2022-07-28 15:12 → 2022-08-18 16:30 (+21d) |  |  |  |  |
