# Task5

How a schedule from MS Project changed from version to version. A marks actual dates.

## Version 1 (data date 2022-04-22, saved 2022-03-28, file Task5.mpp)

Note of the change: add source

| ID | WBS | Task | Duration | Start | Finish | Predecessors | Complete | Total float | Constraint |
| --- | --- | --- | --- | --- | --- | --- | --- | --- | --- |
| 1 |  | Начало проекта | 0w | 2022-03-01 09:00 A | 2022-03-01 09:00 A |  | 100% |  |  |
| 2 | 2 | **Создание интерфейса** | 78.57d | 2022-03-01 09:00 A | 2022-06-28 14:33 | 1 | 87% | 0d |  |
| 3 | 2.1 | **Разработка дизайна интерфейса** | 27.12d | 2022-03-01 09:00 A | 2022-04-11 10:00 A |  | 100% |  |  |
| 4 |  | Разработка 2D графических элементов | 4.12w | 2022-03-01 09:00 A | 2022-03-31 18:00 A |  | 100% |  |  |
| 5 |  | Разработка 3D графических элементов | 2.2w | 2022-03-01 09:00 A | 2022-03-18 11:00 A | 4SS | 100% |  |  |
| 6 |  | Создание заставки | 3.3w | 2022-03-17 12:00 A | 2022-04-11 10:00 A | 5 | 100% |  |  |
| 7 |  | Программирование интерфейса | 1.5w | 2022-06-17 09:33 | 2022-06-28 14:33 | 3, 12 |  | 0d |  |
| 8 | 3 | **Построение базы объектов** | 85.12d | 2022-03-24 14:00 A | 2022-07-28 15:00 |  | 25% | 0.03d |  |
| 9 |  | Анализ и построение структуры базы объектов | 2w | 2022-03-24 14:00 A | 2022-04-07 15:00 A |  | 100% |  |  |
| 10 |  | Программирование средств обработки базы объектов | 3w | 2022-04-07 15:00 A | 2022-04-28 15:00 | 9 | 76% | 0.03d |  |
| 11 |  | Наполнение базы объектов | 12w | 2022-04-28 15:00 | 2022-07-28 15:00 | 10 |  | 0.03d |  |
| 12 | 4 | **Создание ядра GIS** | 71.07d | 2022-03-01 09:00 A | 2022-06-17 09:33 |  | 47% | 0d |  |
| 13 |  | Анализ и проектирование ядра | 3.05w | 2022-03-01 09:00 A | 2022-03-24 12:00 A |  | 100% |  |  |
| 14 |  | Создание модели ядра | 3.41w | 2022-03-24 12:00 A | 2022-04-18 12:13 | 13 | 80% | 4.6d |  |
| 15 |  | Тестирование модели ядра | 1w | 2022-04-18 12:13 A | 2022-04-25 12:13 | 14 | 92% | 0d |  |
| 16 |  | Создание рабочей версии ядра | 6.73w | 2022-04-25 12:13 | 2022-06-17 09:33 | 15 |  | 0d |  |
| 17 |  | Создание мультемедиа-наполнения | 6w | 2022-04-07 15:00 A | 2022-05-26 12:00 | 3 | 37% | 44.28d |  |
| 18 |  | Создание справочной системы | 2w | 2022-07-07 17:33 | 2022-07-22 09:33 | 7 |  | 4.58d |  |
| 19 | 7 | **Создание руководства пользователя** | 17.25d | 2022-06-14 14:33 | 2022-07-07 16:33 | 7FS-10d |  | 0d |  |
| 20 |  | Разработка дизайна руководства | 1w | 2022-06-14 14:33 | 2022-06-21 14:33 |  |  | 0d |  |
| 21 |  | Написание руководства пользователя | 3w | 2022-06-16 14:33 | 2022-07-07 16:33 | 20SS+2d |  | 0d |  |
| 22 | 8 | **Создание web-сайта и поддержка** | 22.95d | 2022-06-16 14:33 | 2022-07-19 14:07 |  |  | 0d |  |
| 23 |  | Разработка структуры сайта | 1d | 2022-06-16 14:33 | 2022-06-17 14:33 | 21SS |  | 0d |  |
| 24 |  | Разработка дизайна сайта | 1.34w | 2022-06-17 14:33 | 2022-06-28 11:07 | 23 |  | 0d |  |
| 25 |  | Наполнение сайта | 3w | 2022-06-28 11:07 | 2022-07-19 14:07 | 24 |  | 0d |  |
| 26 |  | Тестирование сайта | 2.43w | 2022-07-12 14:07 | 2022-07-28 15:12 | 22FS-1w |  | 0d |  |
| 27 |  | Сдача сайта в эксплуатацию | 0w | 2022-07-28 15:12 | 2022-07-28 15:12 | 26 |  | 0d |  |
| 28 | 11 | **Совещание** | 98.12d | 2022-03-02 09:00 A | 2022-07-27 10:00 |  | 36% | 0d |  |
| 29 |  | Совещание 1 | 1h | 2022-03-02 09:00 A | 2022-03-02 10:00 A |  | 100% |  | start no earlier than 2022-03-02 09:00 |
| 30 |  | Совещание 2 | 1h | 2022-03-09 09:00 A | 2022-03-09 10:00 A |  | 100% |  | start no earlier than 2022-03-09 09:00 |
| 31 |  | Совещание 3 | 1h | 2022-03-16 09:00 A | 2022-03-16 10:00 A |  | 100% |  | start no earlier than 2022-03-16 09:00 |
| 32 |  | Совещание 4 | 1h | 2022-03-23 09:00 A | 2022-03-23 10:00 A |  | 100% |  | start no earlier than 2022-03-23 09:00 |
| 33 |  | Совещание 5 | 1h | 2022-03-30 09:00 A | 2022-03-30 10:00 A |  | 100% |  | start no earlier than 2022-03-30 09:00 |
| 34 |  | Совещание 6 | 1h | 2022-04-06 09:00 A | 2022-04-06 10:00 A |  | 100% |  | start no earlier than 2022-04-06 09:00 |
| 35 |  | Совещание 7 | 1h | 2022-04-13 09:00 A | 2022-04-13 10:00 A |  | 100% |  | start no earlier than 2022-04-13 09:00 |
| 36 |  | Совещание 8 | 1h | 2022-04-20 09:00 A | 2022-04-20 10:00 A |  | 100% |  | start no earlier than 2022-04-20 09:00 |
| 37 |  | Совещание 9 | 1h | 2022-04-27 09:00 | 2022-04-27 10:00 |  |  |  | start no earlier than 2022-04-27 09:00 |
| 38 |  | Совещание 10 | 1h | 2022-05-04 09:00 | 2022-05-04 10:00 |  |  |  | start no earlier than 2022-05-04 09:00 |
| 39 |  | Совещание 11 | 1h | 2022-05-11 09:00 | 2022-05-11 10:00 |  |  |  | start no earlier than 2022-05-11 09:00 |
| 40 |  | Совещание 12 | 1h | 2022-05-18 09:00 | 2022-05-18 10:00 |  |  |  | start no earlier than 2022-05-18 09:00 |
| 41 |  | Совещание 13 | 1h | 2022-05-25 09:00 | 2022-05-25 10:00 |  |  |  | start no earlier than 2022-05-25 09:00 |
| 42 |  | Совещание 14 | 1h | 2022-06-01 09:00 | 2022-06-01 10:00 |  |  |  | start no earlier than 2022-06-01 09:00 |
| 43 |  | Совещание 15 | 1h | 2022-06-08 09:00 | 2022-06-08 10:00 |  |  |  | start no earlier than 2022-06-08 09:00 |
| 44 |  | Совещание 16 | 1h | 2022-06-15 09:00 | 2022-06-15 10:00 |  |  |  | start no earlier than 2022-06-15 09:00 |
| 45 |  | Совещание 17 | 1h | 2022-06-22 09:00 | 2022-06-22 10:00 |  |  |  | start no earlier than 2022-06-22 09:00 |
| 46 |  | Совещание 18 | 1h | 2022-06-29 09:00 | 2022-06-29 10:00 |  |  |  | start no earlier than 2022-06-29 09:00 |
| 47 |  | Совещание 19 | 1h | 2022-07-06 09:00 | 2022-07-06 10:00 |  |  |  | start no earlier than 2022-07-06 09:00 |
| 48 |  | Совещание 20 | 1h | 2022-07-13 09:00 | 2022-07-13 10:00 |  |  |  | start no earlier than 2022-07-13 09:00 |
| 49 |  | Совещание 21 | 1h | 2022-07-20 09:00 | 2022-07-20 10:00 |  |  |  | start no earlier than 2022-07-20 09:00 |
| 50 |  | Совещание 22 | 1h | 2022-07-27 09:00 | 2022-07-27 10:00 |  |  |  | start no earlier than 2022-07-27 09:00 |

## Version 2 (data date 2022-04-22, saved 2022-03-29, file Task52.mpp)

Note of the change: add source

Last finish 2022-07-28 → 2022-08-01 (+4d).

Added:

| ID | Task | Duration | Start | Finish |
| --- | --- | --- | --- | --- |
| 2 | **Проектирование** | 33.12d | 2022-03-01 09:00 A | 2022-04-19 09:59 |
| 14 | **Программирование** | 71.19d | 2022-03-24 12:00 A | 2022-07-08 14:33 |
| 21 | **Наполнение** | 63.85d | 2022-04-01 16:13 A | 2022-07-07 15:00 |
| 25 | **Тестирование** | 68.84d | 2022-04-18 12:13 A | 2022-07-29 10:58 |

Changed:

| ID | Task | Start | Finish | Duration | Complete | Total float | Predecessors |
| --- | --- | --- | --- | --- | --- | --- | --- |
| 3 | **Построение базы объектов** | 2022-03-24 14:00 A → 2022-03-01 09:00 A (-23d) | 2022-07-28 15:00 → 2022-04-11 10:00 A (-108d) | 85.12d → 27.12d | 25% → 100% | 0.03d → none |  |
| 10 | Разработка дизайна руководства | 2022-06-14 14:33 → 2022-04-04 09:00 (-71d) | 2022-06-21 14:33 → 2022-04-19 09:59 (-63d) |  |  | 0d → 62.88d |  |
| 11 | **Создание web-сайта и поддержка** | 2022-06-16 14:33 → 2022-03-01 09:00 (-107d) | 2022-07-19 14:07 → 2022-04-14 15:00 (-96d) | 22.95d → 30.62d |  | 0d → 1d |  |
| 12 | Разработка структуры сайта | 2022-06-16 14:33 → 2022-03-01 09:00 (-107d) | 2022-06-17 14:33 → 2022-03-01 18:00 (-108d) |  |  | 0d → 1d | 29SS → none |
| 13 | Разработка дизайна сайта | 2022-06-17 14:33 → 2022-03-02 10:00 (-107d) | 2022-06-28 11:07 → 2022-04-14 15:00 (-75d) | 1.34w → 2.8w |  | 0d → 1d |  |
| 15 | Программирование средств обработки базы объектов | 2022-04-07 15:00 A → 2022-04-07 15:00 | 2022-04-28 15:00 → 2022-04-07 15:00 (-21d) | 3w → 0w | 76% → 0% | 0.03d → 16.62d |  |
| 16 | **Создание ядра GIS** | 2022-03-01 09:00 A → 2022-03-24 12:00 A (+23d) | 2022-06-17 09:33 → 2022-06-29 09:33 (+12d) | 71.07d → 63.69d | 47% → 23% | 0d → -0.3d |  |
| 18 | Создание рабочей версии ядра |  | 2022-06-17 09:33 → 2022-06-29 09:33 (+12d) | 6.73w → 8.33w |  | 0d → -0.3d |  |
| 19 | **Создание интерфейса** | 2022-03-01 09:00 A → 2022-06-29 09:33 (+120d) | 2022-06-28 14:33 → 2022-07-08 14:33 (+10d) | 78.57d → 7.5d | 87% → 0% | 0d → -0.3d |  |
| 20 | Программирование интерфейса | 2022-06-17 09:33 → 2022-06-29 09:33 (+12d) | 2022-06-28 14:33 → 2022-07-08 14:33 (+10d) |  |  | 0d → -0.3d |  |
| 22 | Наполнение базы объектов | 2022-04-28 15:00 → 2022-04-07 15:00 (-21d) | 2022-07-28 15:00 → 2022-07-07 15:00 (-21d) |  |  | 0.03d → 16.62d |  |
| 24 | Наполнение сайта | 2022-06-28 11:07 → 2022-04-01 16:13 (-88d) | 2022-07-19 14:07 → 2022-04-25 12:13 (-85d) |  |  | 0d → 64.85d | 13 → 26FF |
| 27 | Тестирование сайта | 2022-07-12 14:07 → 2022-04-21 14:46 (-82d) | 2022-07-28 15:12 → 2022-07-29 10:58 (+1d) | 2.43w → 7.94w |  | 0d → 1d |  |
| 28 | **Создание руководства пользователя** | 2022-06-14 14:33 → 2022-06-24 14:33 (+10d) | 2022-07-07 16:33 → 2022-08-01 11:00 (+25d) | 17.25d → 25.68d |  |  |  |
| 29 | Написание руководства пользователя | 2022-06-16 14:33 → 2022-06-24 14:33 (+8d) | 2022-07-07 16:33 → 2022-07-15 17:33 (+8d) |  |  | 0d → 10.31d |  |
| 30 | Создание справочной системы | 2022-07-07 17:33 → 2022-07-18 09:00 (+11d) | 2022-07-22 09:33 → 2022-08-01 11:00 (+10d) |  |  | 4.58d → 0d |  |
| 31 | Сдача сайта в эксплуатацию | 2022-07-28 15:12 → 2022-08-01 11:00 (+4d) | 2022-07-28 15:12 → 2022-08-01 11:00 (+4d) |  |  |  | 27 → 28 |
